# Gestion de Projet

Schedule from MS Project, 2012-03-14 to 2012-06-05, 6 hours a day, costs in €, A marks actual dates.

## Calendars

- Standard: Mon-Fri 09:00-12:00, 14:00-18:00; Sat-Sun off.

## Resources

| Resource | Group | Rate |
| --- | --- | --- |
| Sofian Akrour | MOe | 20 |
| Rémy Albert |  | 20 |
| Sylvain Benech |  | 20 |
| Jeremie Delpech |  | 20 |
| Philippe Gautier |  | 20 |

## Schedule

| ID | WBS | Task | Type | Duration | Start | Finish | Predecessors | Complete | Remaining | Actual start | Actual finish | Baseline start | Baseline finish | Baseline duration | Total slack | Free slack | Constraint | Resources | Work | Cost | Baseline cost |
| --- | --- | --- | --- | --- | --- | --- | --- | --- | --- | --- | --- | --- | --- | --- | --- | --- | --- | --- | --- | --- | --- |
| 1 | 1 | **Etude et réflexion** |  | 9.33d | 2012-03-14 09:00 A | 2012-03-23 18:00 |  | 100% |  |  | 2012-03-24 18:00 |  |  |  |  |  |  |  |  |  |  |
| 2 | 1.1 | Rédaction note de cadrage | milestone | 0d? | 2012-03-14 09:00 A | 2012-03-23 15:00 A |  | 100% |  |  |  |  |  |  |  |  | finish no earlier than 2012-03-18 18:00 | Jeremie Delpech |  |  |  |
| 3 | 1.2 | Rédaction cahier des charges | milestone | 0d? | 2012-03-19 09:00 A | 2012-03-24 18:00 A | 2 | 100% |  |  |  |  |  |  |  |  | finish no earlier than 2012-03-24 18:00 |  |  |  |  |
| 4 | 2 | **Préparation de l'environement** |  | 2.33d | 2012-03-26 09:00 A | 2012-03-27 18:00 A |  | 100% |  |  |  |  |  |  |  |  |  |  |  |  |  |
| 5 | 2.1 | Installation du serveur d'hébergement |  | 0.67d? | 2012-03-26 09:00 A | 2012-03-26 18:00 A | 3 | 100% |  |  |  |  |  |  |  |  | finish no earlier than 2012-03-26 18:00 |  |  |  |  |
| 6 | 2.2 | Installation système bases de données |  | 0.67d? | 2012-03-27 09:00 A | 2012-03-27 18:00 A | 5 | 100% |  |  |  |  |  |  |  |  | finish no earlier than 2012-03-27 18:00 |  |  |  |  |
| 7 | 3 | **Conception** |  | 9.33d | 2012-03-28 09:00 A | 2012-04-06 18:00 |  | 98% | 0.2d |  |  | 2012-05-09 10:00 | 2012-05-09 15:00 | 0.5d |  |  |  |  | 5h | 100 | 60 |
| 8 | 3.1 | Réalisation schéma base de données |  | 8.83d? | 2012-03-28 09:00 A | 2012-04-06 18:00 A | 6 | 100% |  |  |  |  |  |  |  |  | finish no earlier than 2012-04-06 18:00 |  |  |  |  |
| 9 | 3.2 | Réflexion sur QCM |  | 8.83d? | 2012-03-28 09:00 A | 2012-04-06 15:00 A | 6 | 100% |  |  |  |  |  |  |  |  | start no earlier than 2012-03-28 09:00 |  |  |  |  |
| 10 | 3.3 | Définition arborescence site |  | 9.33d? | 2012-03-28 09:00 A | 2012-04-06 18:00 A | 6 | 100% |  |  |  |  |  |  |  |  | start no earlier than 2012-03-28 09:00 |  |  |  |  |
| 11 | 3.4 | Réflexion sur charte graphique |  | 8.83d? | 2012-03-28 09:00 A | 2012-04-06 15:00 A | 6 | 100% |  |  |  |  |  |  |  |  | start no earlier than 2012-03-28 09:00 |  |  |  |  |
| 12 | 3.5 | Etablissement structure page Web type | milestone | 0d? | 2012-04-02 09:00 A | 2012-04-06 15:00 A | 11 | 100% |  |  |  |  |  |  |  |  | start no earlier than 2012-04-02 09:00 | Jeremie Delpech |  |  |  |
| 13 | 3.6 | Redaction du dossier de conception |  | 0.67d? | 2012-03-28 09:00 A | 2012-03-28 15:00 A |  | 100% |  |  |  |  |  |  |  |  |  |  |  |  |  |
| 14 | 3.7 | Validation du MCD |  | 0.67d | 2012-04-26 09:00 A | 2012-04-26 15:00 A |  | 100% |  |  |  |  |  |  |  |  | start no earlier than 2012-04-26 09:00 |  |  |  |  |
| 15 | 3.8 | Réalisation diagramme séquence |  | 0.33d? | 2012-05-11 09:00 A | 2012-05-16 12:00 |  |  | 0.33d? |  |  |  |  |  | -11d | 0d | finish no earlier than 2012-05-07 15:00 | Philippe Gautier | 2h | 40 |  |
| 16 | 3.9 | Traduction du diagramme de séquence en fichiers |  | 0.33d? | 2012-05-11 09:00 A | 2012-05-16 16:00 | 15 |  | 0.33d? |  |  | 2012-05-09 10:00 | 2012-05-09 12:00 | 0.33d? | -34.83d | 0d |  | Philippe Gautier | 2h | 40 | 40 |
| 17 | 3.10 | Rédaction cahier de tests |  | 0.17d? | 2012-05-16 16:00 | 2012-05-16 17:00 | 16 |  |  |  |  | 2012-05-09 14:00 | 2012-05-09 15:00 | 0.17d? | -34.83d | 0d |  | Philippe Gautier | 1h | 20 | 20 |
| 18 | 4 | **Développement** |  | 35d | 2012-04-25 09:00 | 2012-06-05 18:00 | 11 |  | 35d | 2012-05-11 09:00 |  | 2012-05-02 10:00 | 2012-05-30 17:42 | 24.28d |  |  |  |  | 22.9h | 428.01 | 428.01 |
| 19 | 4.1 | **module connexion** |  | 5.5d? | 2012-05-11 09:00 A | 2012-05-17 16:00 |  |  | 5.5d? |  |  | 2012-05-02 10:00 | 2012-05-10 12:00 | 7.33d? | 4.16d | 4d |  |  | 4.5h | 60 | 60 |
| 20 | 4.1.1 | création de la base de donnée |  | 0.17d? | 2012-05-11 09:00 A | 2012-05-16 11:00 | 14 |  | 0.17d? |  |  | 2012-05-02 10:00 | 2012-05-02 11:00 | 0.17d? | 0.83d | 0d |  | Sofian Akrour | 1h | 20 | 20 |
| 21 | 4.1.2 | requête sql module connexion |  | 0.08d? | 2012-05-16 11:00 | 2012-05-16 11:30 | 20 |  |  |  |  | 2012-05-02 11:00 | 2012-05-02 11:30 | 0.08d? | 0.83d | 0.58d |  | Sofian Akrour | 0.5h | 10 | 10 |
| 22 | 4.1.3 | développement php |  | 0.17d? | 2012-05-16 16:00 | 2012-05-16 17:00 | 16 |  |  |  |  | 2012-05-09 14:00 | 2012-05-09 15:00 | 0.17d? | 0.24d | 0d |  | Sofian Akrour | 1h | 20 | 20 |
| 23 | 4.1.4 | design |  | 1d? | 2012-05-16 17:00 | 2012-05-17 16:00 | 17 |  |  |  |  | 2012-05-09 15:00 | 2012-05-10 12:00 | 1d? | 4.16d |  |  |  | 1.5h |  |  |
| 24 | 4.1.5 | tests |  | 0.08d? | 2012-05-16 17:00 | 2012-05-16 17:30 | 22, 21, 20 |  |  |  |  | 2012-05-09 15:00 | 2012-05-09 15:30 | 0.08d? | 5.08d | 0d |  | Sofian Akrour | 0.5h | 10 | 10 |

| ID | WBS | Task | Type | Duration | Start | Finish | Predecessors | Baseline start | Baseline finish | Baseline duration | Total slack | Free slack | Constraint | Resources | Work | Cost | Baseline cost |
| --- | --- | --- | --- | --- | --- | --- | --- | --- | --- | --- | --- | --- | --- | --- | --- | --- | --- |
| 25 | 4.2 | **module étudiant** |  | 5.85d? | 2012-05-23 10:00 | 2012-05-30 10:06 |  | 2012-05-16 10:00 | 2012-05-23 10:06 | 5.85d? | 0.16d | 0d |  |  | 8h | 160 | 160 |
| 26 | 4.2.1 | requête sql |  | 0.37d? | 2012-05-23 10:00 | 2012-05-23 14:13 | 19 | 2012-05-16 10:00 | 2012-05-16 14:13 | 0.37d? | 0.16d | 0d |  | Sofian Akrour [90%] | 2h | 40 | 40 |
| 27 | 4.2.2 | développement php |  | 0.56d? | 2012-05-23 14:13 | 2012-05-23 17:33 | 26 | 2012-05-16 14:13 | 2012-05-16 17:33 | 0.56d? | 0.16d | 0d |  | Sofian Akrour [90%] | 3h | 60 | 60 |
| 28 | 4.2.3 | développement javascript |  | 0.56d? | 2012-05-23 10:00 | 2012-05-23 15:20 | 19 | 2012-05-16 10:00 | 2012-05-16 15:20 | 0.56d? | 0.6d | 0.37d |  | Philippe Gautier [45%] | 1.5h | 30 | 30 |
| 29 | 4.2.4 | design |  | 0.37d? | 2012-05-23 10:00 | 2012-05-23 14:13 | 19 | 2012-05-16 10:00 | 2012-05-16 14:13 | 0.37d? | 0.79d | 0.56d |  | Philippe Gautier [45%] | 1h | 20 | 20 |
| 30 | 4.2.5 | tests |  | 0.09d? | 2012-05-23 17:33 | 2012-05-30 10:06 | 29, 28, 27, 26 | 2012-05-16 17:33 | 2012-05-23 10:06 | 0.09d? | 0.23d |  |  | Philippe Gautier [90%] | 0.5h | 10 | 10 |
| 31 | 4.3 | **module administrateur** |  | 0.77d? | 2012-05-30 10:00 | 2012-05-30 16:36 |  | 2012-05-23 10:06 | 2012-05-30 15:30 | 6.4d? | 0.09d |  |  |  | 5.7h | 114.01 | 114.01 |
| 32 | 4.3.1 | requête sql |  | 0.19d? | 2012-05-30 10:00 | 2012-05-30 11:06 | 27 | 2012-05-30 10:00 | 2012-05-30 11:06 | 0.19d? | 0.09d | 0.04d | start no earlier than 2012-05-30 09:00 | Sofian Akrour [90%] | 1h | 20.01 | 20.01 |
| 33 | 4.3.2 | développement php |  | 0.28d? | 2012-05-30 11:20 | 2012-05-30 15:00 | 32 | 2012-05-30 11:20 | 2012-05-30 15:00 | 0.28d? | 0.05d | 0d | finish no earlier than 2012-05-30 15:00 | Sofian Akrour [90%] | 1.5h | 30 | 30 |
| 34 | 4.3.3 | développement javascript |  | 0.67d? | 2012-05-30 10:06 | 2012-05-30 16:06 | 25 | 2012-05-23 10:06 | 2012-05-23 16:06 | 0.67d? | 0.23d | 0d |  | Philippe Gautier [50%] | 2h | 40 | 40 |
| 35 | 4.3.4 | design |  | 0.28d? | 2012-05-30 10:06 | 2012-05-30 11:46 | 25 | 2012-05-23 10:06 | 2012-05-23 11:46 | 0.28d? | 0.62d | 0.39d |  | Philippe Gautier [60%] | 1h | 20 | 20 |
| 36 | 4.3.5 | tests |  | 0.08d? | 2012-05-30 16:06 | 2012-05-30 16:36 | 35, 34, 33, 32 | 2012-05-30 15:00 | 2012-05-30 15:30 | 0.08d? | 0.23d |  |  | Philippe Gautier [40%] | 0.2h | 4 | 4 |
| 37 | 4.4 | **module enseignant** |  | 0.45d? | 2012-05-30 15:00 | 2012-05-30 17:42 |  | 2012-05-30 15:00 | 2012-05-30 17:42 | 0.45d? | 0.05d |  |  |  | 4.7h | 94 | 94 |
| 38 | 4.4.1 | requête sql |  | 0.17d? | 2012-05-30 15:00 | 2012-05-30 16:00 | 33 | 2012-05-30 15:00 | 2012-05-30 16:00 | 0.17d? | 0.05d | 0d |  | Sofian Akrour | 1h | 20 | 20 |
| 39 | 4.4.2 | développement php |  | 0.25d? | 2012-05-30 16:00 | 2012-05-30 17:30 | 38 | 2012-05-30 16:00 | 2012-05-30 17:30 | 0.25d? | 0.05d | 0d |  | Sofian Akrour | 1.5h | 30 | 30 |
| 40 | 4.4.3 | développement javascript |  | 0.25d? | 2012-05-30 15:00 | 2012-05-30 16:30 | 33 | 2012-05-30 15:00 | 2012-05-30 16:30 | 0.25d? | 0.08d | 0d |  | Philippe Gautier | 1.5h | 30 | 30 |
| 41 | 4.4.4 | design |  | 0.17d? | 2012-05-30 16:30 | 2012-05-30 17:30 | 40 | 2012-05-30 16:30 | 2012-05-30 17:30 | 0.17d? | 0.08d |  |  | Philippe Gautier [50%] | 0.5h | 10 | 10 |
| 42 | 4.4.5 | tests |  | 0.03d? | 2012-05-30 17:30 | 2012-05-30 17:42 | 40, 39, 38 | 2012-05-30 17:30 | 2012-05-30 17:42 | 0.03d? | 0.05d |  |  | Sofian Akrour | 0.2h | 4 | 4 |
| 43 | 5 | **Rédaction des livrables et préparation de la présentation** |  | 34.5d | 2012-04-25 09:00 | 2012-06-05 15:00 |  | 2012-04-25 09:00 | 2012-06-05 15:00 | 34.5d |  |  |  |  | 2.1h | 42 | 42 |
| 44 | 5.1 | rédaction du manuel d'utilisation |  | 11h | 2012-05-16 17:30 | 2012-05-30 16:30 | 24 | 2012-05-09 15:30 | 2012-05-23 14:30 | 11h | 0.25d |  |  | Philippe Gautier [5%]; Sofian Akrour [5%] | 1.1h | 22 | 22 |
| 45 | 5.2 | préparation de la présentation du logiciel |  | 10h | 2012-05-16 17:30 | 2012-05-30 15:30 | 24 | 2012-05-09 15:30 | 2012-05-23 11:30 | 10h | 0.42d |  | start no earlier than 2012-05-05 09:00 | Philippe Gautier [5%]; Sofian Akrour [5%] | 1h | 20 | 20 |
| 46 | 5.3 | soutenance | milestone | 0d | 2012-05-29 09:00 | 2012-05-29 09:00 |  | 2012-05-29 09:00 | 2012-05-29 09:00 | 0d | 7d |  | start no earlier than 2012-05-29 09:00 |  |  |  |  |
